# 需求v0.5

Schedule from MS Project, 2017-09-28 to 2018-01-29, 1 hours a day, costs in ¥.

## Calendars

- 标准: Mon-Fri 21:00-22:00; Sat-Sun 19:00-22:00.

## Resources

| Resource | Rate |
| --- | --- |
| 孟玉盛 | 30.97 |
| 潘国强 | 30.97 |
| 钱智凯 | 30.97 |
| 瞿达晨 | 30.97 |
| 黄枭帅 | 30.97 |
| 笔记本 |  |
| 手机 |  |
| 场地 |  |

## Schedule

| ID | WBS | Task | Type | Duration | Start | Finish | Predecessors | Total slack | Free slack | Constraint | Resources | Work | Cost | 任务负责人 |
| --- | --- | --- | --- | --- | --- | --- | --- | --- | --- | --- | --- | --- | --- | --- |
| 1 | 1 | **准备阶段** |  | 55d | 2017-09-28 21:00 | 2017-11-01 22:00 |  | 141d |  |  |  | 53.5h | 1,656.89 |  |
| 2 | 1.1 | 分组 | milestone | 1d | 2017-09-28 21:00 | 2017-09-28 22:00 |  | 184d | 0d | start no earlier than 2017-09-28 21:00 | 场地 [0.1%]; 黄枭帅 [10%]; 孟玉盛 [10%]; 潘国强 [10%]; 钱智凯 [10%]; 瞿达晨 [10%] | 0.5h | 15.49 | 孟玉盛 |
| 3 | 1.2 | 第一次例会 |  | 0.25h | 2017-09-29 21:00 | 2017-09-29 22:00 | 2 | 184d | 0d | finish no earlier than 2017-09-28 22:00 | 笔记本 [0.1%]; 场地 [0.1%]; 黄枭帅; 孟玉盛; 潘国强; 钱智凯; 瞿达晨; 手机 [0.1%] | 1.25h | 38.71 | 孟玉盛 |
| 4 | 1.3 | 找ppt模板设计logo |  | 6h | 2017-09-30 19:00 | 2017-10-01 22:00 | 3 | 184d | 7d | finish no earlier than 2017-10-01 22:00 | 潘国强 [25%]; 笔记本 [0.1%] | 1.5h | 46.45 | 潘国强 |
| 5 | 1.4 | 学习配置管理系统 |  | 6h | 2017-10-01 21:00 | 2017-10-06 22:00 | 3 | 183d |  | finish no earlier than 2017-10-06 22:00 | 黄枭帅; 笔记本 [0.1%] | 6h | 185.82 | 黄枭帅 |
| 6 | 1.5 | 安装软件到虚拟机 |  | 2h | 2017-10-05 21:00 | 2017-10-06 22:00 | 3 | 183d |  | finish no earlier than 2017-10-06 22:00 | 笔记本 [0.1%]; 瞿达晨 | 2h | 61.94 | 瞿达晨 |
| 7 | 1.6 | 完成第一次翻转课堂草稿版 |  | 2h | 2017-10-07 21:00 | 2017-10-08 22:00 | 3 | 177d |  | finish no earlier than 2017-10-08 22:00 | 笔记本 [0.1%]; 钱智凯 | 2h | 61.94 | 钱智凯 |
| 8 | 1.7 | 完成配置管理系统ppt |  | 2h | 2017-10-07 21:00 | 2017-10-08 22:00 | 4 | 177d |  | finish no earlier than 2017-10-08 22:00 | 笔记本 [0.1%]; 黄枭帅; 孟玉盛; 潘国强; 瞿达晨 | 8h | 247.76 | 孟玉盛 |
| 9 | 1.8 | 可行性分析 |  | 1h | 2017-10-28 21:00 | 2017-10-28 22:00 |  | 147d |  | start no earlier than 2017-10-28 21:00 | 笔记本 [0.1%]; 黄枭帅; 孟玉盛; 潘国强; 钱智凯; 瞿达晨 | 5h | 154.85 | 黄枭帅 |
| 10 | 1.9 | 第二次例会 |  | 0.25h | 2017-10-14 21:00 | 2017-10-14 22:00 |  | 169d |  | finish no earlier than 2017-10-14 22:00 | 笔记本 [0.1%]; 场地 [0.1%]; 黄枭帅; 孟玉盛; 潘国强; 钱智凯; 瞿达晨; 手机 [0.1%] | 1.25h | 38.71 | 孟玉盛 |
| 11 | 1.10 | 第三次例会 |  | 0.25h | 2017-10-21 21:00 | 2017-10-21 21:15 |  | 158.75d |  | start no earlier than 2017-10-21 21:00 | 笔记本 [0.1%]; 场地 [0.1%]; 黄枭帅; 孟玉盛; 潘国强; 钱智凯; 瞿达晨; 手机 [0.1%] | 1.25h | 38.71 | 孟玉盛 |
| 12 | 1.11 | 第四次例会 |  | 0.25h | 2017-10-29 21:00 | 2017-10-29 22:00 |  | 144d |  | start no earlier than 2017-10-29 21:00 | 笔记本 [0.1%]; 场地 [0.1%]; 黄枭帅; 孟玉盛; 潘国强; 钱智凯; 瞿达晨; 手机 [0.1%] | 1.25h | 38.71 | 孟玉盛 |
| 13 | 1.12 | 完成第一次翻转课堂PPT |  | 3h | 2017-10-28 21:00 | 2017-10-29 22:00 |  | 144d |  | start no earlier than 2017-10-28 21:00 | 笔记本 [0.1%]; 黄枭帅 [50%]; 孟玉盛 [50%]; 钱智凯 [50%] | 4.5h | 139.37 | 钱智凯 |
| 14 | 1.13 | **编写《需求工程计划-初步》** |  | 8d | 2017-10-26 21:00 | 2017-10-29 22:00 |  | 144d |  |  |  | 14h | 433.58 | 孟玉盛 |
| 15 | 1.13.1 | 制作评审ppt |  | 1d | 2017-10-26 21:00 | 2017-10-26 22:00 |  | 151d |  |  | 笔记本 [0.1%]; 黄枭帅; 孟玉盛; 潘国强; 瞿达晨 | 4h | 123.88 |  |
| 16 | 1.13.2 | 文档编写 |  | 7d | 2017-10-27 21:00 | 2017-10-29 22:00 |  | 144d |  | finish no earlier than 2017-10-29 22:00 | 笔记本 [0.1%]; 黄枭帅 [50%]; 孟玉盛 [50%] | 7h | 216.79 |  |
| 17 | 1.13.3 | 制作甘特图 |  | 6h | 2017-10-28 19:00 | 2017-10-29 22:00 |  | 144d |  | finish no earlier than 2017-10-29 22:00 | 潘国强 [50%] | 3h | 92.91 |  |
| 18 | 1.14 | **修改《需求工程计划-初步》** |  | 1d | 2017-11-01 21:00 | 2017-11-01 22:00 |  | 139.75d |  |  |  | 5h | 154.85 | 孟玉盛 |
| 19 | 1.14.1 | 修改配置管理子计划 |  | 1h | 2017-11-01 21:00 | 2017-11-01 22:00 |  | 141d |  | start no earlier than 2017-11-01 21:00 | 笔记本 [0.1%]; 黄枭帅 | 1h | 30.97 |  |
| 20 | 1.14.2 | 修改风险 |  | 1h | 2017-11-01 21:00 | 2017-11-01 22:00 |  | 141d |  | start no earlier than 2017-11-01 21:00 | 笔记本 [0.1%]; 钱智凯 | 1h | 30.97 |  |
| 21 | 1.14.3 | 修改甘特图 |  | 1d | 2017-11-01 21:00 | 2017-11-01 22:00 |  | 141d |  | start no earlier than 2017-11-01 21:00 | 潘国强; 笔记本 [0.1%] | 1h | 30.97 |  |
| 22 | 1.14.4 | 修改人力资源子计划 |  | 1d | 2017-11-01 21:00 | 2017-11-01 22:00 |  | 141d |  | start no earlier than 2017-11-01 21:00 | 笔记本 [0.1%]; 孟玉盛 | 1h | 30.97 |  |
| 23 | 1.14.5 | 增加预算计划 |  | 1h | 2017-11-01 21:00 | 2017-11-01 22:00 |  | 141d |  | start no earlier than 2017-11-01 21:00 | 笔记本 [0.1%]; 瞿达晨 | 1h | 30.97 |  |
| 24 | 2 | **需求获取** |  | 33d | 2017-11-02 21:00 | 2017-11-22 22:00 |  | 108d |  |  |  | 18.5h | 572.95 |  |
| 25 | 2.1 | 识别用户群 |  | 1d | 2017-11-02 21:00 | 2017-11-02 22:00 |  | 140d |  | start no earlier than 2017-11-02 21:00 | 笔记本 [0.1%]; 瞿达晨 | 1h | 30.97 | 瞿达晨 |
| 26 | 2.2 | 组织焦点小组 |  | 1h | 2017-11-03 21:00 | 2017-11-03 22:00 | 22 | 139d |  | finish no earlier than 2017-11-03 22:00 | 笔记本 [0.1%]; 孟玉盛 [25%]; 钱智凯 [25%] | 0.5h | 15.48 | 孟玉盛 |

| ID | WBS | Task | Duration | Start | Finish | Predecessors | Total slack | Free slack | Constraint | Resources | Work | Cost | 任务负责人 |
| --- | --- | --- | --- | --- | --- | --- | --- | --- | --- | --- | --- | --- | --- |
| 27 | 2.3 | **完成《需求工程计划》** | 1d | 2017-11-03 21:00 | 2017-11-03 22:00 | 2 | 134d |  |  |  | 2.75h | 85.17 | 孟玉盛 |
| 28 | 2.3.1 | 修改甘特图 | 1h | 2017-11-03 21:00 | 2017-11-03 22:00 |  | 139d |  | start no earlier than 2017-11-03 21:00 | 笔记本 [0.1%]; 孟玉盛 [75%] | 0.75h | 23.23 | 孟玉盛 |
| 29 | 2.3.2 | 添加沟通管理子计划 | 1d | 2017-11-03 21:00 | 2017-11-03 22:00 |  | 139d |  | start no earlier than 2017-11-03 21:00 | 笔记本 [0.1%]; 瞿达晨 | 1h | 30.97 | 瞿达晨 |
| 30 | 2.3.3 | 添加任务的输入输出 | 1d | 2017-11-03 21:00 | 2017-11-03 22:00 |  | 139d |  | start no earlier than 2017-11-03 21:00 | 笔记本 [0.1%]; 潘国强 | 1h | 30.97 | 潘国强 |
| 31 | 2.4 | 识别用户需求 | 1h | 2017-11-04 21:00 | 2017-11-04 22:00 | 23 | 135.75d | 10d | start no earlier than 2017-11-04 21:00 | 笔记本 [0.1%]; 潘国强 [50%]; 瞿达晨 [50%]; 手机 [0.1%] | 1h | 30.97 | 潘国强 |
| 32 | 2.5 | 第五次例会 | 0.25h | 2017-11-04 21:00 | 2017-11-04 22:00 | 28 | 135d | 16d | finish no earlier than 2017-11-04 22:00 | 笔记本 [0.1%]; 场地 [0.1%]; 黄枭帅; 孟玉盛; 潘国强; 钱智凯; 瞿达晨; 手机 [0.1%] | 1.25h | 38.71 | 孟玉盛 |
| 33 | 2.6 | 识别系统事件和响应 | 1d | 2017-11-05 21:00 | 2017-11-05 22:00 | 29 | 130d | 0d | start no earlier than 2017-11-05 21:00 | 笔记本 [0.1%]; 黄枭帅 | 1h | 30.97 | 黄枭帅 |
| 34 | 2.7 | 定义愿景和范围 | 3h | 2017-11-06 21:00 | 2017-11-08 22:00 | 30 | 129d | 15d | start no earlier than 2017-11-06 21:00 | 笔记本 [0.1%]; 孟玉盛 [25%]; 钱智凯 [25%] | 1.5h | 46.45 | 孟玉盛 |
| 35 | 2.8 | 第六次例会 | 0.25h | 2017-11-11 21:00 | 2017-11-11 21:15 | 31 | 125.75d |  | start no earlier than 2017-11-11 21:00 | 笔记本 [0.1%]; 场地 [0.1%]; 黄枭帅; 孟玉盛; 潘国强; 钱智凯; 瞿达晨; 手机 [0.1%] | 1.25h | 38.71 | 孟玉盛 |
| 36 | 2.9 | 客户需求获取访谈 | 1h | 2017-11-15 21:00 | 2017-11-15 22:00 | 32 | 119d |  | start no earlier than 2017-11-15 21:00 | 笔记本 [0.1%]; 黄枭帅 | 1h | 30.97 | 黄枭帅 |
| 37 | 2.10 | 举行引导式需求获取讨论会 | 1d | 2017-11-16 21:00 | 2017-11-16 22:00 | 33 | 117d | 6d | start no earlier than 2017-11-16 21:00 | 笔记本 [0.1%]; 孟玉盛; 瞿达晨 [50%] | 1h | 30.97 | 瞿达晨 |
| 38 | 2.11 | 观察用户如何完成工作 | 1d | 2017-11-18 21:00 | 2017-11-18 22:00 | 34 | 113d | 5d | start no earlier than 2017-11-18 21:00 | 笔记本 [0.1%]; 潘国强; 手机 [0.1%] | 1h | 30.97 | 潘国强 |
| 39 | 2.12 | 分析文档 | 1d | 2017-11-18 21:00 | 2017-11-18 22:00 | 34 | 114d |  | start no earlier than 2017-11-18 21:00 | 笔记本 [0.1%]; 钱智凯; 瞿达晨 | 2h | 61.94 | 瞿达晨 |
| 40 | 2.13 | 检查问题报告 | 1h | 2017-11-18 21:00 | 2017-11-18 22:00 | 34 | 114d |  | start no earlier than 2017-11-18 21:00 | 笔记本 [0.1%]; 潘国强 | 1h | 30.97 | 潘国强 |
| 41 | 2.14 | 重用已有的需求 | 1d | 2017-11-19 21:00 | 2017-11-19 22:00 | 37 | 111d |  | start no earlier than 2017-11-19 21:00 | 笔记本 [0.1%]; 钱智凯 | 1h | 30.97 | 钱智凯 |
| 42 | 2.15 | 教师用户需求获取访谈 | 1h | 2017-11-22 21:00 | 2017-11-22 22:00 | 38 | 108d |  | start no earlier than 2017-11-22 21:00 | 笔记本 [0.1%]; 黄枭帅 [25%]; 孟玉盛 [25%]; 潘国强 [25%]; 钱智凯 [25%]; 瞿达晨 [25%] | 1.25h | 38.71 | 孟玉盛 |
| 43 | 3 | **需求分析** | 25d | 2017-11-16 21:00 | 2017-12-02 20:00 |  | 94d |  |  |  | 19h | 588.43 |  |
| 44 | 3.1 | 应用环境建模 | 1d | 2017-11-16 21:00 | 2017-11-16 22:00 |  | 107.75d | 3d | start no earlier than 2017-11-16 21:00 | 笔记本 [0.1%]; 孟玉盛 | 1h | 30.97 | 孟玉盛 |
| 45 | 3.2 | 第七次例会 | 0.25h | 2017-11-18 21:00 | 2017-11-18 21:15 | 44 | 104.75d | 2.75d | start no earlier than 2017-11-18 21:00 | 笔记本 [0.1%]; 场地 [0.1%]; 黄枭帅; 孟玉盛; 潘国强; 钱智凯; 瞿达晨; 手机 [0.1%] | 1.25h | 38.71 | 孟玉盛 |
| 46 | 3.3 | 分析可实现性 | 1d | 2017-11-20 21:00 | 2017-11-20 22:00 | 45 | 101d | 0d | start no earlier than 2017-11-20 21:00 | 笔记本 [0.1%]; 孟玉盛; 瞿达晨 | 2h | 61.94 | 瞿达晨 |
| 47 | 3.4 | 排列需求优先级 | 1d | 2017-11-21 21:00 | 2017-11-21 22:00 | 46 | 106d | 8d | start no earlier than 2017-11-21 21:00 | 笔记本 [0.1%]; 钱智凯 | 1h | 30.97 | 钱智凯 |
| 48 | 3.5 | 创建原型 | 4h | 2017-11-19 21:00 | 2017-11-22 22:00 | 45 | 106d | 9d | start no earlier than 2017-11-19 21:00 | 笔记本 [0.1%]; 潘国强 [25%]; 钱智凯 [25%]; 黄枭帅 [25%]; 孟玉盛 [25%] | 4h | 123.88 | 潘国强 |
| 49 | 3.6 | 将需求分配到子系统 | 3h | 2017-11-24 21:00 | 2017-11-25 21:00 | 46 | 100d | 6d | start no earlier than 2017-11-24 21:00 | 笔记本 [0.1%]; 钱智凯 [25%]; 瞿达晨 [25%]; 黄枭帅 [25%]; 孟玉盛 [25%]; 潘国强 [25%] | 3.75h | 116.14 | 钱智凯 |
| 50 | 3.7 | 创建数据字典 | 3h | 2017-11-26 21:00 | 2017-11-28 22:00 | 47 | 98d |  | start no earlier than 2017-11-26 21:00 | 笔记本 [0.1%]; 钱智凯 | 3h | 92.91 | 钱智凯 |
| 51 | 3.8 | 需求建模 | 2h | 2017-11-28 21:00 | 2017-11-29 22:00 | 48 | 97d |  | start no earlier than 2017-11-28 21:00 | 笔记本 [0.1%]; 孟玉盛 [50%]; 瞿达晨 [50%] | 2h | 61.94 | 孟玉盛 |
| 52 | 3.9 | 分析接口 | 4h | 2017-11-29 21:00 | 2017-12-02 20:00 | 49 | 94d |  | start no earlier than 2017-11-29 21:00 | 笔记本 [0.1%]; 潘国强 [25%] | 1h | 30.97 | 潘国强 |

| ID | WBS | Task | Type | Duration | Start | Finish | Predecessors | Total slack | Free slack | Constraint | Resources | Work | Cost | 任务负责人 |
| --- | --- | --- | --- | --- | --- | --- | --- | --- | --- | --- | --- | --- | --- | --- |
| 53 | 4 | **需求规范说明** |  | 37d | 2017-11-25 21:00 | 2017-12-17 22:00 |  | 67d |  |  |  | 43.75h | 1,354.94 |  |
| 54 | 4.1 | 采用需求文档模板 |  | 1d | 2017-11-25 21:00 | 2017-11-25 22:00 |  | 98d | 0d | start no earlier than 2017-11-25 21:00 | 笔记本 [0.1%]; 黄枭帅 | 1h | 30.97 | 黄枭帅 |
| 55 | 4.2 | 第八次例会 |  | 1d | 2017-11-25 21:00 | 2017-11-25 22:00 | 46 | 98d | 5d | start no earlier than 2017-11-25 21:00 | 笔记本 [0.1%]; 场地 [0.1%]; 黄枭帅; 孟玉盛; 潘国强; 钱智凯; 瞿达晨; 手机 [0.1%] | 5h | 154.85 | 孟玉盛 |
| 56 | 4.3 | 识别需求源头 |  | 1d | 2017-11-26 19:00 | 2017-11-26 20:00 | 54 | 101d | 2d |  | 笔记本 [0.1%]; 孟玉盛 | 1h | 30.97 | 孟玉盛 |
| 57 | 4.4 | 为每个需求分配唯一标识 |  | 1d | 2017-11-27 21:00 | 2017-11-27 22:00 | 56 | 99d |  | start no earlier than 2017-11-27 21:00 | 笔记本 [0.1%]; 瞿达晨 | 1h | 30.97 | 瞿达晨 |
| 58 | 4.5 | 记录业务规则 |  | 4h | 2017-11-29 21:00 | 2017-12-02 20:00 | 55 | 93d | 0d | start no earlier than 2017-11-29 21:00 | 笔记本 [0.1%]; 潘国强 [25%] | 1h | 30.97 | 潘国强 |
| 59 | 4.6 | 描述非功能性需求 |  | 1d | 2017-12-02 20:00 | 2017-12-02 21:00 | 58 | 93d |  | start no earlier than 2017-11-26 08:00 | 笔记本 [0.1%]; 钱智凯 | 1h | 30.97 | 钱智凯 |
| 60 | 4.7 | 第九次例会 |  | 0.25h | 2017-12-02 19:00 | 2017-12-02 20:00 |  | 94d |  | start no earlier than 2017-12-02 08:00 | 笔记本 [0.1%]; 场地 [0.1%]; 黄枭帅; 孟玉盛; 潘国强; 钱智凯; 瞿达晨; 手机 [0.1%] | 1.25h | 38.71 | 孟玉盛 |
| 61 | 4.8 | 第十次例会 |  | 0.25h | 2017-12-09 19:00 | 2017-12-09 20:00 |  | 83d |  | start no earlier than 2017-12-09 08:00 | 笔记本 [0.1%]; 场地 [0.1%]; 黄枭帅; 孟玉盛; 潘国强; 钱智凯; 瞿达晨; 手机 [0.1%] | 1.25h | 38.71 | 孟玉盛 |
| 62 | 4.9 | 第十一次例会 |  | 0.25h | 2017-12-16 19:00 | 2017-12-16 20:00 |  | 72d |  | start no earlier than 2017-12-16 08:00 | 笔记本 [0.1%]; 孟玉盛; 场地 [0.1%]; 黄枭帅; 潘国强; 钱智凯; 瞿达晨; 手机 [0.1%] | 1.25h | 38.71 | 孟玉盛 |
| 63 | 4.10 | 完成《软件需求规格说明书》 | milestone | 12h | 2017-12-10 21:00 | 2017-12-17 22:00 |  | 67d |  | start no earlier than 2017-12-10 21:00 | 笔记本 [0.1%]; 黄枭帅 [50%]; 孟玉盛 [50%]; 潘国强 [50%]; 钱智凯 [50%]; 瞿达晨 [50%] | 30h | 929.1 | 孟玉盛 |
| 64 | 5 | **需求验证** |  | 4d | 2017-12-18 21:00 | 2017-12-21 22:00 |  | 63d |  |  |  | 4h | 123.88 |  |
| 65 | 5.1 | 评审需求 |  | 1d | 2017-12-18 21:00 | 2017-12-18 22:00 |  | 63d | 0d | start no earlier than 2017-12-18 21:00 | 笔记本 [0.1%]; 钱智凯 | 1h | 30.97 | 钱智凯 |
| 66 | 5.2 | 测试需求 |  | 1d | 2017-12-19 21:00 | 2017-12-19 22:00 | 65 | 63d | 0d |  | 笔记本 [0.1%]; 瞿达晨 | 1h | 30.97 | 瞿达晨 |
| 67 | 5.3 | 定义验收条件 |  | 1d | 2017-12-20 21:00 | 2017-12-20 22:00 | 66 | 63d | 0d | start no earlier than 2017-12-14 08:00 | 笔记本 [0.1%]; 潘国强 | 1h | 30.97 | 潘国强 |
| 68 | 5.4 | 模拟需求 |  | 1d | 2017-12-21 21:00 | 2017-12-21 22:00 | 67 | 63d |  |  | 笔记本 [0.1%]; 黄枭帅 | 1h | 30.97 | 黄枭帅 |
| 69 | 6 | **需求管理** |  | 30d | 2017-12-22 21:00 | 2018-01-08 22:00 |  | 33d |  |  |  | 34.25h | 1,060.72 |  |
| 70 | 6.1 | 建立变更控制流程 |  | 1d | 2017-12-22 21:00 | 2017-12-22 22:00 |  | 55d | 2d | start no earlier than 2017-12-22 21:00 | 笔记本 [0.1%]; 孟玉盛 | 1h | 30.97 | 孟玉盛 |
| 71 | 6.2 | 分析变更影响 |  | 1d | 2017-12-23 21:00 | 2017-12-23 22:00 | 70 | 53d | 0d | finish no earlier than 2017-12-23 22:00 | 笔记本 [0.1%]; 钱智凯 [50%] | 0.5h | 15.48 | 钱智凯 |
| 72 | 6.3 | 建立基线，管理需求版本 |  | 1h | 2017-12-24 19:00 | 2017-12-24 20:00 | 71 | 53d | 0d |  | 笔记本 [0.1%]; 瞿达晨 [50%] | 0.5h | 15.48 | 瞿达晨 |
| 73 | 6.4 | 维护变更历史 |  | 1h | 2017-12-24 20:00 | 2017-12-24 21:00 | 72 | 53d | 0d | start no earlier than 2017-12-19 08:00 | 笔记本 [0.1%]; 潘国强 [50%] | 0.5h | 15.48 | 潘国强 |
| 74 | 6.5 | 跟踪需求状态 |  | 1d | 2017-12-24 21:00 | 2017-12-24 22:00 | 73 | 53d | 0d |  | 笔记本 [0.1%]; 黄枭帅 | 1h | 30.97 | 黄枭帅 |
| 75 | 6.6 | 维护需求问题 |  | 1d | 2017-12-25 21:00 | 2017-12-25 22:00 | 74 | 53d | 0d | start no earlier than 2017-12-20 08:00 | 笔记本 [0.1%]; 瞿达晨 | 1h | 30.97 | 瞿达晨 |
| 76 | 6.7 | 维护需求可跟踪矩阵 |  | 1d | 2017-12-26 21:00 | 2017-12-26 22:00 | 75 | 53d | 0d |  | 笔记本 [0.1%]; 孟玉盛 | 1h | 30.97 | 孟玉盛 |
| 77 | 6.8 | 使用需求管理工具 |  | 1d | 2017-12-27 21:00 | 2017-12-27 22:00 | 76 | 53d |  |  | 笔记本 [0.1%]; 潘国强 | 1h | 30.97 | 潘国强 |
| 78 | 6.9 | 第十二次例会 |  | 0.25h | 2017-12-23 19:00 | 2017-12-23 20:00 |  | 61d |  | start no earlier than 2017-12-23 08:00 | 笔记本 [0.1%]; 场地 [0.1%]; 黄枭帅; 孟玉盛; 潘国强; 钱智凯; 瞿达晨; 手机 [0.1%] | 1.25h | 38.71 | 孟玉盛 |
| 79 | 6.10 | 第十三次例会 |  | 0.25h | 2017-12-30 19:00 | 2017-12-30 19:15 |  | 50.75d |  | start no earlier than 2017-12-30 08:00 | 笔记本 [0.1%]; 孟玉盛 | 0.25h | 7.74 | 孟玉盛 |
| 80 | 6.11 | 第十四次例会 |  | 0.25h | 2018-01-06 21:00 | 2018-01-06 22:00 |  | 37d |  | start no earlier than 2018-01-06 21:00 | 笔记本 [0.1%]; 场地 [0.1%]; 黄枭帅; 孟玉盛; 潘国强; 钱智凯; 瞿达晨; 手机 [0.1%] | 1.25h | 38.71 | 孟玉盛 |
| 81 | 6.12 | 完成《软件需求变更文档》 | milestone | 5h | 2018-01-06 21:00 | 2018-01-08 22:00 |  | 24d | 1d | start no earlier than 2018-01-06 21:00 | 笔记本 [0.1%]; 黄枭帅; 孟玉盛; 潘国强; 钱智凯; 瞿达晨 | 25h | 774.25 | 孟玉盛 |

| ID | WBS | Task | Type | Duration | Start | Finish | Predecessors | Total slack | Free slack | Constraint | Resources | Work | Cost | 任务负责人 |
| --- | --- | --- | --- | --- | --- | --- | --- | --- | --- | --- | --- | --- | --- | --- |
| 82 | 7 | **概要设计** |  | 28d | 2018-01-01 21:00 | 2018-01-20 20:00 |  | 17d |  |  |  | 33.5h | 1,037.49 |  |
| 83 | 7.1 | 结构设计 |  | 1h | 2018-01-09 21:00 | 2018-01-09 22:00 |  | 32d |  | start no earlier than 2018-01-09 21:00 | 笔记本 [0.1%]; 孟玉盛 | 1h | 30.97 | 孟玉盛 |
| 84 | 7.2 | 完成《软件概要设计说明》 | milestone | 9h | 2018-01-10 21:00 | 2018-01-14 22:00 | 81 | 23d |  | finish no earlier than 2018-01-14 22:00 | 笔记本 [0.1%]; 黄枭帅 [50%]; 孟玉盛 [50%]; 潘国强 [50%]; 钱智凯 [50%]; 瞿达晨 [50%] | 22.5h | 696.83 | 孟玉盛 |
| 85 | 7.3 | 第十五次例会 |  | 0.25h | 2018-01-13 19:00 | 2018-01-13 20:00 |  | 28d |  | start no earlier than 2018-01-13 08:00 | 笔记本 [0.1%]; 场地 [0.1%]; 黄枭帅; 孟玉盛; 潘国强; 钱智凯; 瞿达晨; 手机 [0.1%] | 1.25h | 38.71 | 孟玉盛 |
| 86 | 7.4 | 模块设计 |  | 1d | 2018-01-01 21:00 | 2018-01-01 22:00 |  | 44d |  | start no earlier than 2018-01-01 08:00 | 笔记本 [0.1%]; 瞿达晨 | 1h | 30.97 | 瞿达晨 |
| 87 | 7.5 | 第十六次例会 |  | 0.25h | 2018-01-20 19:00 | 2018-01-20 20:00 |  | 17d |  | start no earlier than 2018-01-20 08:00 | 笔记本 [0.1%]; 场地 [0.1%]; 黄枭帅; 孟玉盛; 潘国强; 钱智凯; 瞿达晨; 手机 [0.1%] | 1.25h | 38.71 | 孟玉盛 |
| 88 | 7.6 | 图形界面设计 |  | 1h | 2018-01-10 21:00 | 2018-01-10 22:00 |  | 29d | 0d | start no earlier than 2018-01-10 21:00 | 笔记本 [0.1%]; 孟玉盛; 潘国强 [50%]; 瞿达晨 | 1.5h | 46.45 | 潘国强 |
| 89 | 7.7 | 接口设计 |  | 1h | 2018-01-11 21:00 | 2018-01-11 22:00 | 88 | 29d | 0d |  | 笔记本 [0.1%]; 黄枭帅 [50%]; 孟玉盛 [50%]; 潘国强 [50%]; 钱智凯 [50%]; 瞿达晨 [50%] | 2.5h | 77.42 | 瞿达晨 |
| 90 | 7.8 | 完成系统设计与实现计划 |  | 1h | 2018-01-12 21:00 | 2018-01-12 22:00 | 89 | 29d |  |  | 笔记本 [0.1%]; 黄枭帅 [50%]; 孟玉盛 [50%]; 潘国强 [50%]; 钱智凯 [50%]; 瞿达晨 [50%] | 2.5h | 77.42 | 钱智凯 |
| 91 | 8 | **实现** |  | 18d | 2018-01-02 21:00 | 2018-01-13 22:00 |  | 26d |  |  |  | 33.5h | 1,037.49 |  |
| 92 | 8.1 | 编写代码 |  | 3h | 2018-01-02 21:00 | 2018-01-04 22:00 |  | 39d | 0d | start no earlier than 2018-01-02 21:00 | 黄枭帅; 孟玉盛; 瞿达晨; 笔记本 [0.1%] | 9h | 278.73 | 瞿达晨 |
| 93 | 8.2 | 完成《测试计划》、《安装部署计划》、《项目总结报告》 |  | 2h | 2018-01-05 21:00 | 2018-01-06 20:00 | 92 | 39d |  |  | 笔记本 [0.1%]; 黄枭帅; 孟玉盛; 潘国强; 钱智凯; 瞿达晨 | 10h | 309.7 | 黄枭帅 |
| 94 | 8.3 | 单元测试 |  | 2h | 2018-01-07 21:00 | 2018-01-08 22:00 |  | 26d | 0d | start no earlier than 2018-01-07 21:00 | 黄枭帅; 孟玉盛; 笔记本 [0.1%] | 4h | 123.88 | 黄枭帅 |
| 95 | 8.4 | 调试 |  | 3h | 2018-01-09 21:00 | 2018-01-12 22:00 | 94 | 26d | 0d |  | 笔记本 [0.1%]; 潘国强 [50%]; 钱智凯 [50%] | 3h | 92.91 | 潘国强 |
| 96 | 8.5 | 完成《培训计划》、《系统维护计划》 |  | 3h | 2018-01-13 19:00 | 2018-01-13 22:00 | 95 | 26d |  |  | 笔记本 [0.1%]; 黄枭帅 [50%]; 孟玉盛 [50%]; 潘国强 [50%]; 钱智凯 [50%]; 瞿达晨 [50%] | 7.5h | 232.28 | 钱智凯 |
| 97 | 9 | **测试** |  | 27d | 2018-01-13 21:00 | 2018-01-29 22:00 |  | 0d |  |  |  | 17.2h | 532.68 |  |
| 98 | 9.1 | 系统测试 |  | 4h | 2018-01-13 21:00 | 2018-01-14 22:00 |  | 23d |  | start no earlier than 2018-01-13 21:00 | 笔记本 [0.1%]; 瞿达晨 [50%] | 2h | 61.94 | 钱智凯 |
| 99 | 9.2 | 功能测试 |  | 1h | 2018-01-15 21:00 | 2018-01-15 22:00 |  | 22d |  | start no earlier than 2018-01-15 21:00 | 笔记本 [0.1%]; 孟玉盛 [50%] | 0.2h | 6.19 | 瞿达晨 |
| 100 | 9.3 | 缺陷跟踪 |  | 1h | 2018-01-16 21:00 | 2018-01-16 22:00 |  | 21d |  | start no earlier than 2018-01-16 21:00 | 笔记本 [0.1%]; 黄枭帅 [50%]; 孟玉盛 [50%]; 潘国强 [50%]; 钱智凯 [50%]; 瞿达晨 [50%] | 1.25h | 38.71 | 潘国强 |
| 101 | 9.4 | 完成《软件概要设计说明》 |  | 1h | 2018-01-17 21:00 | 2018-01-17 22:00 |  | 20d |  | start no earlier than 2018-01-17 21:00 | 笔记本 [0.1%]; 黄枭帅 [50%]; 孟玉盛 [50%]; 潘国强 [50%]; 钱智凯 [50%]; 瞿达晨 [50%] | 1.5h | 46.45 | 孟玉盛 |
| 102 | 9.5 | **收尾阶段** |  | 13d | 2018-01-21 21:00 | 2018-01-29 22:00 |  | 0d |  |  |  | 12.25h | 379.38 |  |
| 103 | 9.5.1 | 验收评审 | milestone | 12h | 2018-01-21 21:00 | 2018-01-28 22:00 |  | 0d |  | finish no earlier than 2018-01-28 22:00 | 笔记本 [0.1%]; 孟玉盛 [50%] | 6h | 185.82 |  |
| 104 | 9.5.2 | 第十七次例会 |  | 0.25h | 2018-01-27 21:00 | 2018-01-27 21:15 |  | 4.75d |  | start no earlier than 2018-01-27 21:00 | 笔记本 [0.1%]; 场地 [0.1%]; 黄枭帅; 孟玉盛; 潘国强; 钱智凯; 瞿达晨; 手机 [0.1%] | 1.25h | 38.71 |  |
| 105 | 9.5.3 | 总结 |  | 1d | 2018-01-29 21:00 | 2018-01-29 22:00 | 103 | 0d |  | finish no earlier than 2018-01-28 17:00 | 笔记本 [0.1%]; 黄枭帅; 孟玉盛; 潘国强; 钱智凯; 瞿达晨 | 5h | 154.85 | 孟玉盛 |
